# Предварительный план2007

Schedule from MS Project, 2013-04-22 to 2014-05-06, A marks actual dates.

## Calendars

- Стандартный: Mon-Fri 09:00-13:00, 14:00-18:00; Sat-Sun off. Exceptions (off unless hours are given): 2013-05-01 to 2013-05-05 (Первое мая), 2013-05-09 to 2013-05-12 (Девятое мая).

## Resources

| Resource |
| --- |
| Шилин Роман |
| Аналитик |
| Андрей Пирожков |
| Тугушев Илья |
| Денис Митавский |
| Алексей Львов |
| Андрей Карандей |
| Валерий Мацукевич |
| Java разработчик3 |
| Java разработчик4 |
| WEB-дизайнер |
| Влад Симоненко |
| Андрей Цветков |
| Java разработчик5 |
| Тест Аналитик |
| Java разработчик6 |
| Тестировщик |
| Технический писатель |
| Технолог - администратор |
| Технический писатель2 |
| Системный аналитик1 |
| Системный аналитик2 |
| Системный аналитик3 |
| Системный аналитик4 |
| Владимир Панов |
| Сергей Кашанский |
| Роман Митинков |
| Роман Болотов |
| Глеб Наздрачев |
| Евгения Капустина |
| Эдуард Михайлов |
| Тимофей Билый |

## Schedule

| ID | WBS | Task | Type | Duration | Start | Finish | Predecessors | Complete | Remaining | Total slack | Free slack | Constraint | Resources | Work | Actual work |
| --- | --- | --- | --- | --- | --- | --- | --- | --- | --- | --- | --- | --- | --- | --- | --- |
| 1 | 1 | **Разработка второй версии CM4/5** |  | 267d? | 2013-04-22 A | 2014-05-06 |  | 9% | 243.27d? | 0d |  |  |  | 22749.6h | 1630.34h |
| 2 | 1.1 | Принято решение о начале разработки | milestone | 0d | 2013-04-22 | 2013-04-22 |  |  |  | 0d |  | start no earlier than 2013-04-22 |  |  |  |
| 3 | 1.2 | Управление проектом |  | 267d | 2013-04-22 | 2014-05-06 | 2 |  |  | 0d |  |  | Шилин Роман | 2136h |  |
| 4 | 1.3 | **Управление требованиями** |  | 193d | 2013-05-27 A | 2014-02-19 | 2 | 6% | 181.71d | 54d |  |  | Аналитик | 3463.2h | 178.34h |
| 5 | 1.3.1 | Выделен аналитик на проект | milestone | 0d | 2013-05-27 A | 2013-05-27 A |  | 100% |  |  |  | start no earlier than 2013-05-27 |  |  |  |
| 6 | 1.3.2 | Формирование скоупа проекта _ верхний уровень |  | 15d | 2013-05-27 A | 2013-06-14 | 5 | 73% | 4d | 54d | 0d |  | Евгения Капустина | 120h | 88h |
| 7 | 1.3.3 | Скоуп на систему сформирован и утвержден | milestone | 0d | 2013-06-21 | 2013-06-21 | 6FS+5d |  |  | 54d | 0d |  |  |  |  |
| 8 | 1.3.4 | Сопровождение требований |  | 173d | 2013-06-24 | 2014-02-19 | 5, 7 |  |  | 54d |  |  | Эдуард Михайлов; Евгения Капустина [30%] | 1799.2h |  |
| 9 | 1.4 | **Создание модуля "Делопроизводство" (документоориентированная среда)** |  | 234d? | 2013-04-22 A | 2014-03-20 |  | 11% | 208.29d? | 33d |  |  |  | 16702.4h | 1452h |
| 10 | 1.4.1 | Первичные требования для создания модуля "Делопроизводство" подготовлены | milestone | 0d | 2013-04-22 | 2013-04-22 | 2 |  |  | 65.83d | 0d | finish no earlier than 2012-04-02 |  |  |  |
| 11 | 1.4.2 | **Апробация идей прототипа** |  | 24d | 2013-04-29 A | 2013-06-06 |  | 99% | 0d | 238d |  |  |  | 144h | 144h |
| 12 | 1.4.2.1 | Пирожков доступен | milestone | 0d | 2013-06-03 | 2013-06-03 |  |  |  | 242d |  | start no earlier than 2013-06-03 |  |  |  |
| 13 | 1.4.2.2 | Проведение предварительных испытаний системы |  | 9d | 2013-04-29 A | 2013-05-16 A | 10FS+5d | 100% |  |  |  |  | Андрей Цветков | 72h | 72h |
| 14 | 1.4.2.3 | Описание обработки ВХ. Док. На примере технологий прототипа |  | 9d | 2013-05-20 A | 2013-06-06 A |  | 100% |  |  |  | start no earlier than 2013-05-20 | Андрей Пирожков | 72h | 72h |
| 15 | 1.4.3 | **Настройка инфраструктуры** |  | 37d | 2013-05-20 A | 2013-07-09 | 24 | 47% | 19.73d | 18.85d | 0d |  |  | 120h | 56h |
| 16 | 1.4.3.1 | Настройка непрерывной интеграции |  | 4d | 2013-05-20 A | 2013-05-23 A |  | 100% |  |  |  |  | Тугушев Илья | 32h | 32h |
| 17 | 1.4.3.2 | Поддержка UNIT-тестирования и интеграционного тестирования на уроне среды непрерывной интеграции |  | 5d | 2013-06-04 | 2013-06-10 |  |  |  | 39.85d |  | start no earlier than 2013-06-04 | Тугушев Илья | 40h |  |
| 18 | 1.4.3.3 | Репакеджинг проекта |  | 3d | 2013-05-27 A | 2013-05-29 A |  | 100% |  |  |  | start no earlier than 2013-05-27 | Сергей Кашанский | 24h | 24h |
| 19 | 1.4.3.4 | Автоматическое заполнение параметров JDBC через Maven |  | 3d | 2013-07-05 | 2013-07-09 | 30 |  |  | 18.85d | 4d |  | Андрей Цветков | 24h |  |
| 20 | 1.4.4 | **Проектирование и формирование ядра системы** |  | 144d? | 2013-04-22 A | 2013-11-14 | 10 | 18% | 118.09d? | 55d | 0d |  |  | 6418.4h | 1012h |
| 21 | 1.4.4.1 | **Определение структуры модуля Делопроизводство** |  | 25d | 2013-04-22 A | 2013-05-31 A |  | 100% |  |  |  |  |  | 352h | 352h |
| 22 | 1.4.4.1.1 | Разбивка на слои |  | 5d | 2013-04-22 A | 2013-04-26 A |  | 100% |  |  |  |  | Денис Митавский [50%]; Андрей Пирожков [50%] | 40h | 40h |
| 23 | 1.4.4.1.2 | Конфигурации, загрузка и инициализация системы в базовой конфигурации |  | 5d | 2013-04-29 A | 2013-05-08 A | 22 | 100% |  |  |  |  | Валерий Мацукевич; Денис Митавский [50%] | 60h | 60h |
| 24 | 1.4.4.1.3 | Базовая конфигурация объектов системы |  | 5d | 2013-05-13 A | 2013-05-17 A | 22, 23 | 100% |  |  |  |  | Денис Митавский [50%]; Валерий Мацукевич | 60h | 60h |
| 25 | 1.4.4.1.4 | Юнит-тестирование - базис |  | 6d | 2013-05-17 A | 2013-05-24 A | 13 | 100% |  |  |  |  | Денис Митавский [50%]; Андрей Цветков | 72h | 72h |
| 26 | 1.4.4.1.5 | Базовая имплементация слоя DAO |  | 5d | 2013-05-20 A | 2013-05-24 A | 24 | 100% |  |  |  |  | Валерий Мацукевич | 40h | 40h |
| 27 | 1.4.4.1.6 | Обеспечение программных компонет верификации первой очереди |  | 5d | 2013-05-27 A | 2013-05-31 A | 26 | 100% |  |  |  |  | Валерий Мацукевич; Андрей Цветков | 80h | 80h |

Notes:
- 27: UNIT тестирование в рамках наработанного кода

| ID | WBS | Task | Type | Duration | Start | Finish | Predecessors | Complete | Remaining | Total slack | Free slack | Constraint | Resources | Work | Actual work |
| --- | --- | --- | --- | --- | --- | --- | --- | --- | --- | --- | --- | --- | --- | --- | --- |
| 28 | 1.4.4.2 | **DAO** |  | 43d? | 2013-06-03 A | 2013-07-31 | 26, 27 | 84% | 6.94d? | 77d |  |  |  | 224h | 184h |
| 29 | 1.4.4.2.1 | DAO для бизнес-объектов |  | 7d | 2013-06-03 A | 2013-06-11 A |  | 100% |  |  |  |  | Валерий Мацукевич | 56h | 56h |
| 30 | 1.4.4.2.2 | DAO для коллекций |  | 13d | 2013-06-12 A | 2013-07-04 A | 29 | 100% |  |  |  |  | Андрей Цветков | 104h | 104h |
| 31 | 1.4.4.2.3 | Функционал системы готов для проведения проектирования интеграции с GUI СМ4 | milestone | 0d | 2013-06-24 A | 2013-06-24 A | 29, 30 | 100% |  |  |  |  |  |  |  |
| 32 | 1.4.4.2.4 | DAO - утилитарные поля |  | 6d | 2013-06-25 A | 2013-07-08 A | 30 | 100% |  |  |  |  | Денис Митавский [50%] | 24h | 24h |
| 33 | 1.4.4.2.5 | DAO - кэш уровня транзакции |  | 5d? | 2013-07-25 | 2013-07-31 | 116 |  |  | 77d | 0d |  | Валерий Мацукевич | 40h |  |
| 34 | 1.4.4.3 | CRUD-сервис для бизнес-объектов |  | 10d | 2013-06-11 A | 2013-06-24 A | 30FF | 100% |  |  |  |  | Андрей Цветков | 80h | 80h |
| 35 | 1.4.4.4 | Поддержка отсортированных дочерних бизнес-объектов |  | 5d | 2013-08-01 | 2013-08-07 | 33 |  |  | 77d | 0d |  | Валерий Мацукевич | 40h |  |
| 36 | 1.4.4.5 | Настройка Datasources/Jaas сервера приложений средствами Maven |  | 2d | 2013-07-05 A | 2013-07-08 A | 30 | 100% |  |  |  |  | Сергей Кашанский | 16h | 16h |
| 37 | 1.4.4.6 | Рефакторинг |  | 4d | 2013-07-03 A | 2013-07-08 A | 26 | 100% |  |  |  | start no earlier than 2013-07-03 | Валерий Мацукевич | 32h | 32h |
| 38 | 1.4.4.7 | **Права доступа** |  | 43d | 2013-06-12 A | 2013-08-09 |  | 44% | 24d | 106d |  |  |  | 248h | 76h |
| 39 | 1.4.4.7.1 | Права - оптимизация хранения (проектирование) |  | 24d | 2013-06-12 A | 2013-07-15 | 29 | 79% | 5d | 36d | 0d |  | Андрей Пирожков [50%] | 96h | 76h |
| 40 | 1.4.4.7.2 | Описание существующими декларативными средствами конфигурации |  | 9d | 2013-07-16 | 2013-07-26 | 39, 19 |  |  | 106d | 0d |  | Андрей Цветков | 72h |  |
| 41 | 1.4.4.7.3 | Автофильтрация |  | 10d | 2013-07-29 | 2013-08-09 | 40 |  |  | 106d | 0d |  | Андрей Цветков | 80h |  |
| 42 | 1.4.4.8 | **Workflow - интеграция с Activiti** |  | 54d | 2013-06-07 A | 2013-08-21 | 14 | 10% | 48.6d | 36d | 3d |  |  | 280h | 12h |
| 43 | 1.4.4.8.1 | Проектирование |  | 10d | 2013-06-07 A | 2013-07-24 | 39 | 30% | 7d | 36d | 0d |  | Андрей Пирожков [50%] | 40h | 12h |
| 44 | 1.4.4.8.2 | Разработка |  | 20d | 2013-07-25 | 2013-08-21 | 43 |  |  | 36d |  |  | Андрей Пирожков [50%]; Сергей Кашанский | 240h |  |
| 45 | 1.4.4.9 | Наследование ??? |  | 9d | 2013-07-25 | 2013-08-06 | 43 |  |  | 127d |  |  | Андрей Пирожков [50%] | 36h |  |
| 46 | 1.4.4.10 | **Коллекции** |  | 25d | 2013-05-29 A | 2013-07-02 |  | 62% | 9.48d | 129d |  |  |  | 320h | 188h |
| 47 | 1.4.4.10.1 | Коллекции - конфигурация |  | 3d | 2013-05-29 A | 2013-05-31 A |  | 100% |  |  |  |  | Денис Митавский | 24h | 24h |
| 48 | 1.4.4.10.2 | DAO - язык запросов коллекций |  | 12d | 2013-05-29 A | 2013-06-17 A | 47 | 100% |  |  |  |  | Сергей Кашанский; Денис Митавский [50%] | 140h | 140h |
| 49 | 1.4.4.10.3 | Сервис получения и получения счетчиков |  | 3d | 2013-05-29 A | 2013-05-31 A | 47 | 100% |  |  |  |  | Сергей Кашанский | 24h | 24h |
| 50 | 1.4.4.10.4 | ПКД |  | 11d | 2013-06-18 | 2013-07-02 | 48 |  |  | 119d | 0d |  | Андрей Пирожков [50%]; Сергей Кашанский | 132h |  |
| 51 | 1.4.4.11 | **Действия** |  | 18d | 2013-08-12 | 2013-09-04 |  |  |  | 106d |  |  |  | 184h |  |
| 52 | 1.4.4.11.1 | Концепция |  | 4d | 2013-08-12 | 2013-08-15 | 47, 41 |  |  | 106d | 0d |  | Андрей Пирожков [50%] | 16h |  |
| 53 | 1.4.4.11.2 | Реализация |  | 14d | 2013-08-16 | 2013-09-04 | 52 |  |  | 106d |  |  | Андрей Карандей; Андрей Пирожков [50%] | 168h |  |

Notes:
- 34: - проектирование базового API / - имплементация
- 35: Для отображени и поддержания заданного порядка следования объектов
- 39: Права доступа - оптимизация подхода, / подбор других названий сущностей (таблицы) переименовать таблицы и улучшить производительность
- 40: Права доступа - описание существующими декларативными средствами конфигурации / (для автоматического создания таблиц) + / конфигурирование под-запроса для фильтрации - там же
- 41: Права доступа - авто-фильтрация / + "внедрение в под-запросы"
- 42: Задачи: / - модель процесса (BPMN) / - Имплементация WF - сервиса , взаимодействие системы с Аctiviti
- 45: Архитектура - форма хранения данных (с учетом производительности) / Наследование типов объектов - уровень DAO
- 48: DAO - язык запросов коллекций
- 49: Коллекции - сервис получения и получения счетчиков
- 50: Для поддержания реализации избранного, отметок о прочтении и т.д.

| ID | WBS | Task | Type | Duration | Start | Finish | Predecessors | Total slack | Free slack | Constraint | Resources | Work |
| --- | --- | --- | --- | --- | --- | --- | --- | --- | --- | --- | --- | --- |
| 54 | 1.4.4.12 | **Бизнес-объекты (иерархии доменных объектов)** |  | 16d | 2013-07-23 | 2013-08-14 |  | 122d |  |  |  | 128h |
| 55 | 1.4.4.12.1 | Проектирование |  | 6d | 2013-07-23 | 2013-07-31 | 56SF | 132d |  |  | Сергей Кашанский | 48h |
| 56 | 1.4.4.12.2 | Реализация |  | 10d | 2013-07-31 | 2013-08-14 | 92SF | 122d | 0d |  | Сергей Кашанский | 80h |
| 57 | 1.4.4.13 | **Слой сопряжения GUI CM4** |  | 103d | 2013-06-25 | 2013-11-14 |  | 55d |  |  |  | 1394.4h |
| 58 | 1.4.4.13.1 | REST-протокол для АРМа - проектирование |  | 3d | 2013-06-25 | 2013-06-27 | 31 | 78d | 23d |  | Тугушев Илья; Денис Митавский [20%]; Андрей Пирожков [20%] | 33.6h |
| 59 | 1.4.4.13.2 | Проектиирование выполнено и ресурсы достуны | milestone | 0d | 2013-07-31 | 2013-07-31 |  | 55d | 0d | start no earlier than 2013-07-31 |  |  |
| 60 | 1.4.4.13.3 | Реализация коннекторов к платформе |  | 70d | 2013-07-31 | 2013-11-05 | 58, 59 | 55d | 0d |  | Тугушев Илья [33%]; Роман Болотов; Глеб Наздрачев | 1304.8h |
| 61 | 1.4.4.13.4 | Сопряжение - работа с вложениями |  | 7d | 2013-11-06 | 2013-11-14 | 65, 60 | 55d |  |  | Влад Симоненко | 56h |
| 62 | 1.4.4.14 | **Сервис работы с вложениями** |  | 5d | 2013-07-11 | 2013-07-17 |  | 134d |  |  |  | 40h |
| 63 | 1.4.4.14.1 | Принято решение о проектировании сервиса обработки вложений | milestone | 0d | 2013-07-11 | 2013-07-11 |  | 134d | 0d | start no earlier than 2013-07-11 |  |  |
| 64 | 1.4.4.14.2 | API |  | 2d | 2013-07-11 | 2013-07-12 | 63 | 134d | 0d |  | Андрей Цветков | 16h |
| 65 | 1.4.4.14.3 | Реализация |  | 3d | 2013-07-15 | 2013-07-17 | 64 | 134d | 79d |  | Влад Симоненко | 24h |
| 66 | 1.4.4.15 | **Поиск** |  | 26d | 2013-07-29 | 2013-09-03 | 34 | 33d |  |  |  | 436h |
| 67 | 1.4.4.15.1 | Идея поиска оформлена | milestone | 0d | 2013-07-29 | 2013-07-29 |  | 33d | 0d | finish no earlier than 2013-07-29 |  |  |
| 68 | 1.4.4.15.2 | Поиск |  | 15d | 2013-07-30 | 2013-08-19 | 67 | 112d | 5d |  | Андрей Пирожков [50%]; Андрей Цветков | 180h |
| 69 | 1.4.4.15.3 | Полнотекстовый поиск |  | 20d | 2013-07-30 | 2013-08-26 | 67 | 107d | 0d |  | Влад Симоненко | 160h |
| 70 | 1.4.4.15.4 | Расширенный поиск |  | 6d | 2013-08-27 | 2013-09-03 | 68, 69 | 107d |  |  | Андрей Пирожков; Андрей Цветков | 96h |
| 71 | 1.4.4.16 | **Работа с отчетами** |  | 23d | 2013-07-03 | 2013-08-02 |  | 129d |  |  |  | 276h |
| 72 | 1.4.4.16.1 | JDBC-драйвер для системы построения отчётов |  | 8d | 2013-07-03 | 2013-07-12 | 50 | 119d | 0d |  | Денис Митавский [50%]; Андрей Цветков | 96h |
| 73 | 1.4.4.16.2 | Интеграция с Jasper Reports |  | 15d | 2013-07-15 | 2013-08-02 | 72 | 119d | 36d |  | Денис Митавский [50%]; Андрей Цветков | 180h |
| 74 | 1.4.4.17 | **GUI** |  | 78d? | 2013-07-22 | 2013-11-06 |  | 56d | 0d |  |  | 804h |
| 75 | 1.4.4.17.1 | Принято решение о применении GWT-компонентов | milestone | 0d | 2013-07-22 | 2013-07-22 |  | 38d | 0d | start no earlier than 2013-07-22 |  |  |
| 76 | 1.4.4.17.2 | Адаптация компонентов GUI из СМ4 для наложения на архитектуру см5 |  | 11d | 2013-07-22 | 2013-08-05 | 75 | 44d | 0d | start no earlier than 2013-07-11 | Тимофей Билый; Алексей Львов | 176h |
| 77 | 1.4.4.17.3 | Разработка базовой архитектуры GUI на основе GWT-компонентов |  | 3d | 2013-07-22 | 2013-07-24 | 75 | 44d | 0d |  | Денис Митавский | 24h |
| 78 | 1.4.4.17.4 | Интеграция с JAAS/Аутентификация |  | 5d | 2013-07-31 | 2013-08-06 | 77, 81 | 115d | 0d | start no earlier than 2013-07-08 | Андрей Карандей | 40h |
| 79 | 1.4.4.17.5 | Архитектура разметки главного экрана |  | 2d | 2013-07-25 | 2013-07-26 | 77, 78 | 56d | 0d |  | Денис Митавский [50%] | 8h |

Notes:
- 60: Начальная реализация модуля "документооборот" - замена лотуса
- 69: Включая взаимодействие с Solr
- 70: C учетом релевантности и оптимизации по объедененеию поисков аттрибутивного и полнотекстового
- 72: Используя язык запросов коллеций

| ID | WBS | Task | Duration | Start | Finish | Predecessors | Total slack | Free slack | Resources | Work |
| --- | --- | --- | --- | --- | --- | --- | --- | --- | --- | --- |
| 80 | 1.4.4.17.6 | **Панель навигации** | 12d | 2013-07-29 | 2013-08-13 |  | 56d |  |  | 56h |
| 81 | 1.4.4.17.6.1 | Проектирование - панель навигации | 2d | 2013-07-29 | 2013-07-30 | 79, 78 | 56d | 0d | Денис Митавский [50%] | 8h |
| 82 | 1.4.4.17.6.2 | Разработка - панель навигации | 6d | 2013-08-06 | 2013-08-13 | 81, 76 | 108d | 0d | Алексей Львов | 48h |
| 83 | 1.4.4.17.7 | GUI - архитектура плагинов/дочерних плагинов | 6d | 2013-07-31 | 2013-08-07 | 81 | 56d | 0d | Денис Митавский | 48h |
| 84 | 1.4.4.17.8 | GUI - отображение отчётов | 8d | 2013-08-07 | 2013-08-16 | 83FS-2d, 78 | 115d | 0d | Андрей Карандей | 64h |
| 85 | 1.4.4.17.9 | **GUI - плагин отображения коллекций** | 10d | 2013-08-08 | 2013-08-21 | 83 | 56d |  |  | 64h |
| 86 | 1.4.4.17.9.1 | Проектирование | 2d | 2013-08-08 | 2013-08-09 | 83 | 56d | 0d | Денис Митавский | 16h |
| 87 | 1.4.4.17.9.2 | Разработка | 6d | 2013-08-14 | 2013-08-21 | 82 | 108d | 0d | Алексей Львов | 48h |
| 88 | 1.4.4.17.10 | **GUI - действия** | 14d | 2013-08-12 | 2013-08-29 |  | 56d |  |  | 56h |
| 89 | 1.4.4.17.10.1 | Проектирование | 2d | 2013-08-12 | 2013-08-13 | 86 | 56d | 0d | Денис Митавский [50%] | 8h |
| 90 | 1.4.4.17.10.2 | Разработка | 6d | 2013-08-22 | 2013-08-29 | 87 | 108d |  | Алексей Львов | 48h |
| 91 | 1.4.4.17.11 | **Формы встроенного GUI** | 23d | 2013-08-14 | 2013-09-13 |  | 56d |  |  | 188h |
| 92 | 1.4.4.17.11.1 | Конфигурация-архитектура | 3d | 2013-08-14 | 2013-08-16 | 89 | 56d | 0d | Денис Митавский [50%] | 12h |
| 93 | 1.4.4.17.11.2 | Маппинг на объекты | 2d | 2013-08-19 | 2013-08-20 | 92, 84 | 115d |  | Андрей Карандей | 16h |
| 94 | 1.4.4.17.11.3 | API GWT client-server | 8d | 2013-08-19 | 2013-08-28 | 92 | 56d | 0d | Денис Митавский | 64h |
| 95 | 1.4.4.17.11.4 | Реализация | 12d | 2013-08-29 | 2013-09-13 | 94 | 92d | 0d | Андрей Карандей | 96h |
| 96 | 1.4.4.17.12 | **GUI - поиск** | 17d | 2013-08-29 | 2013-09-20 |  | 78d |  |  | 52h |
| 97 | 1.4.4.17.12.1 | GUI - поиск. Проектирование | 3d | 2013-08-29 | 2013-09-02 | 94 | 78d | 22d | Денис Митавский [50%] | 12h |
| 98 | 1.4.4.17.12.2 | GUI - поиск. Реализация | 5d | 2013-09-16 | 2013-09-20 | 95 | 92d |  | Андрей Карандей | 40h |
| 99 | 1.4.4.17.13 | **GUI - виджеты разработка** | 50d? | 2013-08-29 | 2013-11-06 |  | 56d |  |  | 8h |
| 100 | 1.4.4.17.13.1 | Дата/время | 1d? | 2013-08-29 | 2013-08-29 | 94 | 108d |  | Тимофей Билый | 8h |
| 101 | 1.4.4.17.13.2 | Остальные без особенностей стиля ст.лебедева (базовый набор) | 25d? | 2013-08-29 | 2013-10-02 | 94 | 56d | 0d |  |  |
| 102 | 1.4.4.17.13.3 | Остальные для стиля ст.лебедева | 25d? | 2013-10-03 | 2013-11-06 | 101 | 59d |  |  |  |
| 103 | 1.4.4.17.14 | **GUI - брендинг, стилизация, темы** | 5d | 2013-10-03 | 2013-10-09 |  | 56d |  |  | 20h |
| 104 | 1.4.4.17.14.1 | Концепция | 5d | 2013-10-03 | 2013-10-09 | 97, 101 | 56d | 0d | Денис Митавский [50%] | 20h |
| 105 | 1.4.4.18 | Тестирование производительности | 25d | 2013-10-10 | 2013-11-13 | 104 | 56d |  | Денис Митавский; Валерий Мацукевич | 400h |
| 106 | 1.4.4.19 | Версионность/аудит | 8d | 2013-08-08 | 2013-08-19 | 35 | 77d | 0d | Валерий Мацукевич | 64h |
| 107 | 1.4.4.20 | Блокировки бизнес-объектов | 6d | 2013-08-20 | 2013-08-27 | 106 | 77d | 0d | Валерий Мацукевич | 48h |
| 108 | 1.4.4.21 | Описание структуры модуля Делопроизводство | 20d | 2013-07-30 | 2013-08-26 | 21, 15, 14, 67 | 33d | 0d | Владимир Панов | 160h |
| 109 | 1.4.4.22 | Уточнение состава и сроков работ | 2d | 2013-11-07 | 2013-11-08 | 74 | 59d |  | Андрей Пирожков; Денис Митавский; Тугушев Илья | 48h |
| 110 | 1.4.4.23 | Кросс-СУБД, поддержка Oracle | 15d | 2013-08-28 | 2013-09-17 | 107 | 77d | 0d | Валерий Мацукевич | 120h |
| 111 | 1.4.4.24 | SQL-trace | 5d | 2013-09-18 | 2013-09-24 | 110 | 77d | 0d | Влад Симоненко | 40h |
| 112 | 1.4.4.25 | Локализация (на уровне конфигурации) | 15d | 2013-09-25 | 2013-10-15 | 111 | 77d |  | Влад Симоненко | 120h |

Notes:
- 105: - полноценное, продуманное, конфигурируемое, полностью автоматизированное (вплоть до промежуточного сбора статистики в СУБД перед запуском тестов производительности) с автоматической генерацией таблиц и графиков, с поддержкой нагружающих потоков и т.п.
- 106: История модификации объекта / Версионность - на бизнес слой
- 110: Кросс-СУБД, поддержка Oracle
- 112: Поддержка ресурсных файлов - в расках конфигурирования ресурсных файлов / Подмена языка в интерфейсе (передача локали пользоввателю) -

| ID | WBS | Task | Duration | Start | Finish | Predecessors | Complete | Remaining | Total slack | Free slack | Resources | Work | Actual work |
| --- | --- | --- | --- | --- | --- | --- | --- | --- | --- | --- | --- | --- | --- |
| 113 | 1.4.4.26 | **Интеграция с системой управления учетными записями** | 14d | 2013-08-28 | 2013-09-16 | 107 |  |  | 98d |  |  | 56h |  |
| 114 | 1.4.4.26.1 | Интеграция с ActiveDirectory | 14d | 2013-08-28 | 2013-09-16 |  |  |  | 98d |  | Андрей Пирожков [50%] | 56h |  |
| 115 | 1.4.4.27 | **Расширение функций сервиса конфигурации** | 28d | 2013-07-09 A | 2013-08-15 |  | 32% | 19d | 105d |  |  | 352h | 72h |
| 116 | 1.4.4.27.1 | Расширяемость конфигурации | 12d | 2013-07-09 A | 2013-07-24 | 37 | 75% | 3d | 77d | 0d | Валерий Мацукевич | 96h | 72h |
| 117 | 1.4.4.27.2 | Изменение и дополнение конфигурации системы | 16d | 2013-07-25 | 2013-08-15 | 116 |  |  | 105d | 0d | Андрей Пирожков; Роман Митинков | 256h |  |
| 118 | 1.4.4.28 | **Сервис для работы с системным журналом** | 15d | 2013-08-16 | 2013-09-05 | 117 |  |  | 105d |  |  | 120h |  |
| 119 | 1.4.4.28.1 | Ведение журнала действий пользователей и действий с объектами системы | 10d | 2013-08-16 | 2013-08-29 |  |  |  | 105d | 0d | Андрей Карандей | 80h |  |
| 120 | 1.4.4.28.2 | Настройка уровня логирования | 5d | 2013-08-30 | 2013-09-05 | 119 |  |  | 105d |  | Андрей Карандей | 40h |  |
| 121 | 1.4.5 | **Разработка** | 203d | 2013-06-11 A | 2014-03-20 | 15 | 3% | 196.15d | 33d |  |  | 6676h | 240h |
| 122 | 1.4.5.1 | Контроль и корректировка технических решений "Архитектурный комитет" | 203d | 2013-06-11 A | 2014-03-20 |  | 10% | 183d | 33d |  | Тугушев Илья [20%]; Андрей Пирожков [20%]; Денис Митавский [20%]; WEB-дизайнер [20%]; Аналитик [20%]; Владимир Панов [50%] | 2436h | 240h |
| 123 | 1.4.5.2 | **Разработка серверной логики модуля CMJ** | 60d | 2013-08-27 | 2013-11-18 | 15, 42, 108 |  |  | 33d | 0d |  | 1920h |  |
| 124 | 1.4.5.2.1 | Разработка схем документов модуля CMJ | 40d | 2013-08-27 | 2013-10-21 |  |  |  | 33d | 0d | Андрей Пирожков [50%]; Влад Симоненко | 480h |  |
| 125 | 1.4.5.2.2 | Разработка ЖЦ процессов модуля (WF) | 20d | 2013-10-22 | 2013-11-18 | 124 |  |  | 33d | 0d | Влад Симоненко; Андрей Пирожков [50%] | 240h |  |
| 126 | 1.4.5.2.3 | Разработка логики бизнес- действий модуля CMJ | 60d | 2013-08-27 | 2013-11-18 |  |  |  | 33d | 0d | Алексей Львов; Андрей Пирожков [50%] | 720h |  |
| 127 | 1.4.5.2.4 | Разработка процессов автоматизации для модуля CMJ | 40d | 2013-08-27 | 2013-10-21 |  |  |  | 91d |  | Андрей Карандей | 320h |  |
| 128 | 1.4.5.2.5 | Разработка модели прав доступа (контекстные роли) | 20d | 2013-10-22 | 2013-11-18 | 124 |  |  | 71d |  | Андрей Карандей | 160h |  |
| 129 | 1.4.5.3 | **Разработка Форм для АРМ тематических администраторов** | 40d | 2013-11-06 | 2013-12-31 | 60 |  |  | 90d |  |  | 960h |  |
| 130 | 1.4.5.3.1 | **Подготовка работы со списками значений** | 40d | 2013-11-06 | 2013-12-31 |  |  |  | 90d |  |  | 640h |  |
| 131 | 1.4.5.3.1.1 | Разработка функционала учета организационно штатной структуры | 40d | 2013-11-06 | 2013-12-31 |  |  |  | 90d |  | Андрей Цветков | 320h |  |
| 132 | 1.4.5.3.1.2 | Разработка функционала с рубрикаторами (сложные справочники) | 20d | 2013-11-06 | 2013-12-03 |  |  |  | 90d | 0d | Валерий Мацукевич | 160h |  |
| 133 | 1.4.5.3.1.3 | Разработка функционала для работы с словарями данных (простые, линейные справочники) | 20d | 2013-12-04 | 2013-12-31 | 132 |  |  | 90d |  | Валерий Мацукевич | 160h |  |
| 134 | 1.4.5.3.2 | Разработка форм для работы в GUI (настройки форм) | 15d | 2013-11-06 | 2013-11-26 |  |  |  | 110d | 0d | Java разработчик3 | 120h |  |
| 135 | 1.4.5.3.3 | Разработка структуры рабочего места АРМ | 5d | 2013-11-27 | 2013-12-03 | 124, 134 |  |  | 110d |  | Java разработчик3 | 40h |  |
| 136 | 1.4.5.3.4 | Разработка специфичных для форм АРМ элементов GUI | 20d | 2013-11-06 | 2013-12-03 |  |  |  | 110d |  | Java разработчик4 | 160h |  |
| 137 | 1.4.5.4 | Подготовка отчетов | 40d | 2013-11-19 | 2014-01-13 | 124, 126, 125 |  |  | 33d | 0d | Влад Симоненко; Алексей Львов; Андрей Карандей | 960h |  |
| 138 | 1.4.5.5 | Сопряжение с мобильным клиентом СМ4 | 50d | 2013-11-19 | 2014-01-27 | 123 |  |  | 71d |  | Java разработчик3 | 400h |  |

Notes:
- 118: Сервис для работы с системным журналомВедение журнала действий пользователей и действий с объектами системы
- 119: Ведение журнала действий пользователей и действий с объектами системы

| ID | WBS | Task | Type | Duration | Start | Finish | Predecessors | Total slack | Free slack | Constraint | Resources | Work |
| --- | --- | --- | --- | --- | --- | --- | --- | --- | --- | --- | --- | --- |
| 139 | 1.4.6 | **Тестирование** |  | 90d? | 2013-11-15 | 2014-03-20 | 20 | 33d | 0d |  |  | 2544h |
| 140 | 1.4.6.1 | **Функциональное тестирование** |  | 75d? | 2013-11-15 | 2014-02-27 |  | 48d |  |  |  | 2224h |
| 141 | 1.4.6.1.1 | Подготовка ПМИ |  | 5d | 2013-11-15 | 2013-11-21 |  | 55d | 0d |  | Тест Аналитик | 40h |
| 142 | 1.4.6.1.2 | Разработка "сценариев тестирования" |  | 15d | 2013-11-15 | 2013-12-05 |  | 60d | 22d |  | Тест Аналитик | 120h |
| 143 | 1.4.6.1.3 | Разработка модели нагрузки для тестирования |  | 10d | 2013-11-22 | 2013-12-05 | 141 | 60d | 22d |  | Тест Аналитик | 80h |
| 144 | 1.4.6.1.4 | Адаптация автоматизированных сценариев от СМ4 для создания нагрузки |  | 25d | 2013-11-22 | 2013-12-26 | 141 | 55d | 22d |  | Влад Симоненко | 200h |
| 145 | 1.4.6.1.5 | **Проведение тестирования** |  | 38d? | 2014-01-07 | 2014-02-27 | 142, 143 | 38d | 0d |  |  | 1784h |
| 146 | 1.4.6.1.5.1 | **Подготовка среды тестирования** |  | 15d? | 2014-01-07 | 2014-01-27 |  | 38d |  |  |  | 200h |
| 147 | 1.4.6.1.5.1.1 | Разворачивание системы |  | 5d? | 2014-01-07 | 2014-01-14 | 149SF | 81d | 0d |  | Влад Симоненко | 40h |
| 148 | 1.4.6.1.5.1.2 | Система готова для подключения инструментов мониторинга | milestone | 0d | 2014-01-14 | 2014-01-14 | 147 | 81d |  |  |  |  |
| 149 | 1.4.6.1.5.1.3 | Наполнение данными |  | 10d? | 2014-01-14 | 2014-01-27 | 137 | 33d | 0d |  | Влад Симоненко; Java разработчик6 | 160h |
| 150 | 1.4.6.1.5.2 | Среда тестирования готова | milestone | 0d | 2014-01-27 | 2014-01-27 | 149, 144 | 33d | 0d | start no earlier than 2012-05-24 |  |  |
| 151 | 1.4.6.1.5.3 | Проведение тестирования |  | 10d | 2014-01-28 | 2014-02-10 | 150 | 33d | 0d |  | Тест Аналитик; Тестировщик [200%] | 240h |
| 152 | 1.4.6.1.5.4 | **Обработка результатов тестирования и внесение изменений в модуль** |  | 15d | 2014-02-07 | 2014-02-27 | 151FS-2d | 33d |  |  |  | 1344h |
| 153 | 1.4.6.1.5.4.1 | Устранение замечаний по результатам функционального тестирования |  | 15d | 2014-02-07 | 2014-02-27 |  | 33d | 0d |  | Java разработчик5; Влад Симоненко [300%]; Валерий Мацукевич; Java разработчик3; Java разработчик4; Андрей Карандей; Алексей Львов; Андрей Цветков | 1200h |
| 154 | 1.4.6.1.5.4.2 | Проверка устранения замечаний |  | 6d | 2014-02-20 | 2014-02-27 | 153FS-6d | 33d | 0d |  | Тест Аналитик; Тестировщик [200%] | 144h |
| 155 | 1.4.6.2 | **Нагрузочное тестирование** |  | 28d | 2014-02-10 | 2014-03-20 | 141 | 33d |  |  |  | 320h |
| 156 | 1.4.6.2.1 | Стенд для нагрузочного тестирования подготовлен | milestone | 0d | 2014-02-10 | 2014-02-10 | 151 | 46d | 13d | finish no earlier than 2012-06-09 |  |  |
| 157 | 1.4.6.2.2 | Проведения нагрузочного тестирования |  | 10d | 2014-02-28 | 2014-03-13 | 154, 144, 156 | 33d | 0d |  | Влад Симоненко; Тест Аналитик; Тестировщик | 240h |
| 158 | 1.4.6.2.3 | Обработка результатов нагрузочного тестирования |  | 5d | 2014-03-14 | 2014-03-20 | 157 | 33d |  |  | Тест Аналитик; Тестировщик | 80h |
| 159 | 1.4.7 | Разработка модуля "Делопроизводство" завершена | milestone | 0d | 2014-03-20 | 2014-03-20 | 139 | 33d |  |  |  |  |
| 160 | 1.4.8 | **Подготовка документации** |  | 80d | 2013-11-15 | 2014-03-06 | 139SS | 43d |  |  |  | 800h |
| 161 | 1.4.8.1 | Разработка документа "Концепция системы " |  | 40d | 2013-11-15 | 2014-01-09 |  | 43d | 0d |  | Владимир Панов | 320h |
| 162 | 1.4.8.2 | Разработка "Software Architecture Document" |  | 40d | 2014-01-10 | 2014-03-06 | 161 | 43d | 0d |  | Владимир Панов | 320h |
| 163 | 1.4.8.3 | Документы подготовлены | milestone | 0d | 2014-03-06 | 2014-03-06 | 162 | 43d |  |  |  |  |
| 164 | 1.4.8.4 | Разработка "Software Architecture Document" для модулей первой очереди |  | 20d | 2013-11-15 | 2013-12-12 |  | 103d | 0d |  | Технический писатель | 160h |
| 165 | 1.4.8.5 | Документы подготовлены | milestone | 0d | 2013-12-12 | 2013-12-12 | 164 | 103d |  |  |  |  |

| ID | WBS | Task | Duration | Start | Finish | Predecessors | Total slack | Free slack | Resources | Work |
| --- | --- | --- | --- | --- | --- | --- | --- | --- | --- | --- |
| 166 | 1.5 | **Проверка работоспособности решения - Организация демонстрации** | 25d? | 2014-01-07 | 2014-02-10 | 145SS | 61d |  |  | 448h |
| 167 | 1.5.1 | Подготовка стенда | 3d | 2014-01-07 | 2014-01-09 | 168SF | 83d |  | Влад Симоненко; Аналитик | 48h |
| 168 | 1.5.2 | Подготовка прототипа | 20d? | 2014-01-07 | 2014-02-03 |  | 61d | 0d | Влад Симоненко; Аналитик | 320h |
| 169 | 1.5.3 | Проведение демонстраций | 3d | 2014-02-04 | 2014-02-06 | 168 | 61d | 0d | Влад Симоненко; Аналитик | 48h |
| 170 | 1.5.4 | Анализ результатов - выводы | 2d | 2014-02-07 | 2014-02-10 | 169 | 61d |  | Влад Симоненко; Аналитик | 32h |
